# Harbourside Health Centre

Schedule from Primavera P6, 2025-09-01 to 2026-10-06, data date 2026-03-02, A marks actual dates.
Must finish by 2026-08-28

## Calendars

- Standard 5-day (UK): Mon-Fri 08:00-12:00, 13:00-17:00; Sat-Sun off. Exceptions (off unless hours are given): 2025-12-25 to 2025-12-26, 2026-01-01, 2026-04-03, 2026-04-06, 2026-05-04, 2026-05-25, 2026-08-31.
- 7-day curing: Mon-Sun 08:00-12:00, 13:00-17:00.

## Resources

| Resource | Group |
| --- | --- |
| Groundworks gang | labor |
| Concrete gang | labor |
| Steel erectors | labor |
| Scaffold crew | labor |
| Roofing crew | labor |
| Facade fixers | labor |
| Bricklayers | labor |
| MEP fitters | labor |
| Lift engineers | labor |
| Commissioning engineers | labor |
| Dryliners | labor |
| Decorators | labor |
| Ceiling fixers | labor |
| Floor layers | labor |
| Joiners | labor |

## Schedule

| ID | WBS | Activity | Type | Duration | Start | Finish | Predecessors | Complete | Remaining | Actual start | Planned start | Planned finish | Total float | Constraint | Resources | Trade | Zone |
| --- | --- | --- | --- | --- | --- | --- | --- | --- | --- | --- | --- | --- | --- | --- | --- | --- | --- |
|  | 1 | **Milestones** |  |  | 2025-09-01 | 2026-10-06 |  |  |  |  |  |  |  |  |  |  |  |
| M1000 |  | Notice to proceed | milestone | 0d | 2025-09-01 A | 2025-09-01 A |  | 100% |  |  |  |  |  |  |  |  |  |
| M1010 |  | Superstructure topped out | milestone | 0d | 2026-03-20 | 2026-03-20 | F4060 |  |  |  | 2026-03-04 | 2026-03-04 | 111.71d |  |  |  |  |
| M1020 |  | Building watertight | milestone | 0d | 2026-07-03 | 2026-07-03 | E5020, E5010, E5035, E5050, E5040 |  |  |  | 2026-05-28 | 2026-05-27 | -26d |  |  |  |  |
| M1030 |  | Level 3 handover to tenant | milestone | 0d | 2026-08-13 | 2026-08-13 | FO-L3A-60, FO-L3B-60 |  |  |  | 2026-07-08 | 2026-07-07 | 1d | finish on or before 2026-08-14 |  |  |  |
| M1040 |  | Substantial completion | milestone | 0d | 2026-09-29 | 2026-09-29 | H8000, K7020, K7030, M1030, H8040 |  |  |  | 2026-08-21 | 2026-08-20 | -26d |  |  |  |  |
| M1050 |  | Project completion | milestone | 0d | 2026-10-06 | 2026-10-06 | H8050, H8060 |  |  |  | 2026-08-28 | 2026-08-27 | -26d |  |  |  |  |
|  | 2 | **Preconstruction & procurement** |  |  | 2025-09-01 | 2026-08-28 |  |  |  |  |  |  |  |  |  |  |  |
| L9000 |  | Site management and preliminaries | level of effort | 0d | 2025-09-01 A | 2026-08-28 | M1000 SS |  | 125d |  |  |  |  |  |  | GC |  |
| P2000 |  | Mobilise site |  | 5d | 2025-09-01 A | 2025-09-05 A | M1000 | 100% |  |  |  |  |  |  |  | GC | Site |
| P2030 |  | Facade design and submittals |  | 30d | 2025-09-01 A | 2025-10-10 A | M1000 | 100% |  |  |  |  |  |  |  | Facade |  |
| P2060 |  | MEP plant procurement (long lead) |  | 60d | 2025-09-01 A | 2025-11-25 A | M1000 | 100% |  |  | 2025-09-01 | 2025-11-21 |  |  |  | MEP |  |
| P2070 |  | Lift procurement |  | 70d | 2025-09-01 A | 2025-12-05 A | M1000 | 100% |  |  |  |  |  |  |  | Lift |  |
| P2010 |  | Temporary works design |  | 10d | 2025-09-08 A | 2025-09-19 A | P2000 | 100% |  |  |  |  |  |  |  | GC |  |
| P2020 |  | Site set-up and hoarding |  | 8d | 2025-09-15 A | 2025-09-25 A | P2000, P2010 SS+5d | 100% |  |  | 2025-09-15 | 2025-09-24 |  |  |  | GC | Site |
| P2040 |  | Facade panel approval |  | 10d | 2025-10-13 A | 2025-10-24 A | P2030 | 100% |  |  |  |  |  |  |  | Facade |  |
| P2050 |  | Facade panels delivered - batch 1 | milestone | 0d | 2025-11-28 | 2025-11-28 A | P2040 FS+25d | 100% |  | 2025-12-01 | 2025-12-01 | 2025-11-28 |  |  |  |  |  |
| P2055 |  | Facade panels delivered - batch 2 | milestone | 0d | 2026-03-27 | 2026-03-27 | P2050 |  |  |  | 2026-03-30 | 2026-03-27 | 0d | mandatory start 2026-03-30 |  |  |  |
| P2080 |  | Utility connection - gas |  | 10d | 2026-05-05 | 2026-05-18 |  |  |  |  |  |  | 18d | start on or after 2026-05-04 |  | Utilities | Site |
| P2090 |  | Utility connection - electrical |  | 10d | 2026-07-06 | 2026-07-17 | M1020 |  |  |  | 2026-05-28 | 2026-06-10 | -26d |  |  | Utilities | Site |
|  | 3 | **Substructure** |  |  | 2025-09-08 | 2025-12-09 |  |  |  |  |  |  |  |  |  |  |  |
| S3000 |  | Bulk excavation |  | 15d | 2025-09-08 A | 2025-09-26 A | P2000 | 100% |  |  |  |  |  |  | Groundworks gang [120 h] | Groundworks | Ground |
| S3010 |  | Piling |  | 20d | 2025-09-29 A | 2025-10-28 A | S3000 | 100% |  |  | 2025-09-29 | 2025-10-24 |  |  | Groundworks gang [160 h] | Groundworks | Ground |
| S3020 |  | Pile caps and ground beams |  | 12d | 2025-10-29 A | 2025-11-13 A | S3010 | 100% |  |  | 2025-10-27 | 2025-11-11 |  |  | Concrete gang [96 h] | Concrete | Ground |
| S3030 |  | Below-ground drainage |  | 10d | 2025-11-14 A | 2025-11-27 A | S3020 | 100% |  |  | 2025-11-12 | 2025-11-25 |  |  | Groundworks gang [80 h] | Groundworks | Ground |
| S3040 |  | Ground floor slab |  | 8d | 2025-11-28 A | 2025-12-09 A | S3030 | 100% |  |  | 2025-11-26 | 2025-12-05 |  |  | Concrete gang [64 h] | Concrete | Ground |

| ID | WBS | Activity | Duration | Start | Finish | Predecessors | Complete | Remaining | Planned start | Planned finish | Total float | Free float | Calendar | Resources | Trade | Zone |
| --- | --- | --- | --- | --- | --- | --- | --- | --- | --- | --- | --- | --- | --- | --- | --- | --- |
|  | 4 | **Superstructure** |  | 2025-12-10 | 2026-03-20 |  |  |  |  |  |  |  |  |  |  |  |
| F4000 |  | Columns and core - level 1 | 6d | 2025-12-10 A | 2025-12-19 A | S3040 | 100% |  | 2025-12-08 | 2025-12-15 |  |  |  | Concrete gang [48 h] | Concrete | L1 |
| F4010 |  | Slab - level 2 | 8d | 2025-12-22 A | 2026-01-07 A | F4000 | 100% |  | 2025-12-16 | 2025-12-29 |  |  |  | Concrete gang [64 h] | Concrete | L2 |
| F4020 |  | Columns and core - level 2 | 6d | 2026-01-08 A | 2026-01-16 A | F4010 | 100% |  | 2025-12-30 | 2026-01-07 |  |  |  | Concrete gang [48 h] | Concrete | L2 |
| F4030 |  | Slab - level 3 | 8d | 2026-01-19 A | 2026-01-29 A | F4020 | 100% |  | 2026-01-08 | 2026-01-19 |  |  |  | Concrete gang [64 h] | Concrete | L3 |
| F4040 |  | Columns and core - level 3 | 6d | 2026-01-30 A | 2026-02-09 A | F4030 | 100% |  | 2026-01-20 | 2026-01-27 |  |  |  | Concrete gang [48 h] | Concrete | L3 |
| F4050 |  | Roof slab | 8d | 2026-02-10 A | 2026-02-24 A | F4040 | 100% |  | 2026-01-28 | 2026-02-06 |  |  |  | Concrete gang [64 h] | Concrete | Roof |
| F4055 |  | Cure roof slab | 10d | 2026-02-25 A | 2026-03-06 | F4050 | 40% | 6d | 2026-02-09 | 2026-02-18 | 20.71d | 0d | 7-day curing | Concrete gang [80 h] | Concrete | Roof |
| F4060 |  | Roof steel and plant deck | 10d | 2026-03-06 | 2026-03-20 | F4055 |  |  | 2026-02-18 | 2026-03-04 | 20.71d | 0d |  | Steel erectors [80 h] | Steel | Roof |
|  | 5 | **Envelope** |  | 2026-01-30 | 2026-07-03 |  |  |  |  |  |  |  |  |  |  |  |
| E5000 |  | Scaffold erection | 10d | 2026-01-30 A | 2026-02-19 A | F4030 | 100% |  | 2026-01-20 | 2026-02-02 |  |  |  | Scaffold crew [80 h] | Scaffolding | Envelope |
| E5030 |  | Curtain wall - north and east elevations | 48d | 2026-02-20 A | 2026-05-21 | P2050, E5000 |  | 56d | 2026-02-03 | 2026-04-13 | -26d |  |  | Facade fixers [384 h] | Facade | Envelope |
| E5060 |  | Scaffold strike - east elevation | 5d | 2026-03-04 A | 2026-05-27 | E5030 | 40% | 3d | 2026-04-14 | 2026-04-20 | 37d | 0d |  | Scaffold crew [40 h] | Scaffolding | Envelope |
| E5010 |  | Roof insulation | 5d | 2026-03-20 | 2026-03-27 | F4060, F4050 |  |  | 2026-03-04 | 2026-03-11 | 34.71d | 0d |  | Roofing crew [40 h] | Roofing | Roof |
| E5040 |  | Brickwork - plant enclosure | 25d | 2026-03-20 | 2026-04-28 | F4060 |  |  | 2026-03-04 | 2026-04-10 | 20.71d |  |  | Bricklayers [200 h] | Masonry | Roof |
| E5020 |  | Roof membrane | 6d | 2026-03-27 | 2026-04-08 | E5010 |  |  | 2026-03-11 | 2026-03-19 | 34.71d | 0d |  | Roofing crew [48 h] | Roofing | Roof |
| E5035 |  | Curtain wall - south and west elevations | 30d | 2026-05-22 | 2026-07-03 | P2055, E5030 |  |  | 2026-04-14 | 2026-05-27 | -26d |  |  | Facade fixers [240 h] | Facade | Envelope |
| E5050 |  | Windows and louvres | 15d | 2026-05-22 | 2026-06-12 | E5030 |  |  | 2026-04-14 | 2026-05-05 | -11d |  |  |  |  | Envelope |
|  | 6 | **Fit-out** |  | 2026-02-02 | 2026-08-13 |  |  |  |  |  |  |  |  |  |  |  |
|  | 6.1 | **Level 1** |  | 2026-02-02 | 2026-07-28 |  |  |  |  |  |  |  |  |  |  |  |
| FO-L1A-10 |  | MEP first fix - L1-A | 4d | 2026-02-02 A | 2026-03-03 | F4020, K7000 SS+10d | 50% | 2d | 2026-01-22 | 2026-01-27 | 53d | 0d |  | MEP fitters [32 h] | MEP | L1-A |
| FO-L1B-10 |  | MEP first fix - L1-B | 5d | 2026-02-11 A | 2026-02-18 A | FO-L1A-10 | 100% |  | 2026-01-28 | 2026-02-03 |  |  |  | MEP fitters [40 h] | MEP | L1-B |
| FO-L1B-20 |  | Partition framing and boarding - L1-B | 7d | 2026-02-20 A | 2026-03-13 | FO-L1B-10, FO-L1A-20 | 57% | 3d | 2026-02-05 | 2026-02-13 | 53d | 0d |  | Dryliners [56 h] | Drylining | L1-B |
| FO-L1B-30 |  | Tape, joint and paint - L1-B | 5d | 2026-02-24 A | 2026-03-16 | FO-L1B-20 SS+2d, FO-L1B-20 FF+1d | 20% | 4d | 2026-02-10 | 2026-02-16 | 63d |  |  | Decorators [40 h] | Decorating | L1-B |
| QA-L1-FS |  | Fire stopping inspection - level 1 | 1d | 2026-02-24 | 2026-02-24 | FO-L1B-20 |  |  | 2026-02-16 | 2026-02-16 | 60d |  |  |  |  | L1-B |
| FO-L1A-20 |  | Partition framing and boarding - L1-A | 6d | 2026-02-26 A | 2026-03-10 | FO-L1A-10 | 17% | 5d | 2026-01-28 | 2026-02-04 | 53d | 0d |  | Dryliners [48 h] | Drylining | L1-A |
| FO-L1A-30 |  | Tape, joint and paint - L1-A | 4d | 2026-07-06 | 2026-07-09 | M1020, FO-L1A-20 SS+2d, FO-L1A-20 FF+1d |  |  | 2026-05-28 | 2026-06-02 | -19d |  |  | Decorators [32 h] | Decorating | L1-A |
| FO-L1A-40 |  | Ceilings - L1-A | 3d | 2026-07-10 | 2026-07-14 | QA-L1-FS, FO-L1A-30, M1020 |  |  | 2026-06-03 | 2026-06-05 | -19d |  |  | Ceiling fixers [24 h] | Ceilings | L1-A |
| FO-L1A-50 |  | Floor finishes - L1-A | 3d | 2026-07-15 | 2026-07-17 | FO-L1A-40 |  |  | 2026-06-08 | 2026-06-10 | -17d |  |  | Floor layers [24 h] | Flooring | L1-A |
| FO-L1B-40 |  | Ceilings - L1-B | 4d | 2026-07-15 | 2026-07-20 | QA-L1-FS, FO-L1B-30, M1020, FO-L1A-40 |  |  | 2026-06-08 | 2026-06-11 | -19d |  |  | Ceiling fixers [32 h] | Ceilings | L1-B |
| FO-L1A-60 |  | Doors and ironmongery - L1-A | 2d | 2026-07-20 | 2026-07-21 | FO-L1A-50 |  |  | 2026-06-11 | 2026-06-12 | 23d | 0d |  | Joiners [16 h] | Joinery | L1-A |
| FO-L1B-50 |  | Floor finishes - L1-B | 4d | 2026-07-21 | 2026-07-24 | FO-L1B-40, FO-L1A-50 |  |  | 2026-06-12 | 2026-06-17 | -18d |  |  | Floor layers [32 h] | Flooring | L1-B |
| FO-L1B-60 |  | Doors and ironmongery - L1-B | 2d | 2026-07-27 | 2026-07-28 | FO-L1B-50 |  |  | 2026-06-18 | 2026-06-19 | 23d |  |  | Joiners [16 h] | Joinery | L1-B |

| ID | WBS | Activity | Duration | Start | Finish | Predecessors | Complete | Planned start | Planned finish | Total float | Free float | Resources | Trade | Zone |
| --- | --- | --- | --- | --- | --- | --- | --- | --- | --- | --- | --- | --- | --- | --- |
|  | 6.2 | **Level 2** |  | 2026-02-19 | 2026-08-12 |  |  |  |  |  |  |  |  |  |
| FO-L2A-10 |  | MEP first fix - L2-A | 4d | 2026-02-19 A | 2026-02-27 A | F4040, FO-L1B-10 | 100% | 2026-02-04 | 2026-02-09 |  |  | MEP fitters [32 h] | MEP | L2-A |
| FO-L2B-10 |  | MEP first fix - L2-B | 7d | 2026-03-02 | 2026-03-10 | FO-L2A-10 |  | 2026-02-10 | 2026-02-18 | 58d | 9d | MEP fitters [56 h] | MEP | L2-B |
| FO-L2A-20 |  | Partition framing and boarding - L2-A | 6d | 2026-03-16 | 2026-03-23 | FO-L2A-10, FO-L1B-20 |  | 2026-02-16 | 2026-02-23 | 53d | 0d | Dryliners [48 h] | Drylining | L2-A |
| FO-L2A-30 |  | Tape, joint and paint - L2-A | 4d | 2026-03-20 | 2026-03-25 | FO-L2A-20 FS-2d |  | 2026-02-20 | 2026-02-25 | 60d |  | Decorators [32 h] | Decorating | L2-A |
| FO-L2B-20 |  | Partition framing and boarding - L2-B | 11d | 2026-03-24 | 2026-04-09 | FO-L2B-10, FO-L2A-20 |  | 2026-02-24 | 2026-03-10 | 53d | 0d | Dryliners [88 h] | Drylining | L2-B |
| FO-L2B-30 |  | Tape, joint and paint - L2-B | 7d | 2026-03-31 | 2026-04-10 | FO-L2B-20 SS+2d, FO-L2B-20 FF+1d |  | 2026-03-03 | 2026-03-11 | 53d |  | Decorators [56 h] | Decorating | L2-B |
| FO-L2A-40 |  | Ceilings - L2-A | 3d | 2026-07-21 | 2026-07-23 | FO-L2A-30, M1020, FO-L1B-40 |  | 2026-06-12 | 2026-06-16 | -19d |  | Ceiling fixers [24 h] | Ceilings | L2-A |
| FO-L2B-40 |  | Ceilings - L2-B | 5d | 2026-07-24 | 2026-07-30 | FO-L2B-30, M1020, FO-L2A-40 |  | 2026-06-17 | 2026-06-23 | -19d |  | Ceiling fixers [40 h] | Ceilings | L2-B |
| FO-L2A-50 |  | Floor finishes - L2-A | 3d | 2026-07-27 | 2026-07-29 | FO-L2A-40, FO-L1B-50 |  | 2026-06-18 | 2026-06-22 | -18d |  | Floor layers [24 h] | Flooring | L2-A |
| FO-L2A-60 |  | Doors and ironmongery - L2-A | 2d | 2026-07-30 | 2026-07-31 | FO-L2A-50 |  | 2026-06-23 | 2026-06-24 | 20d |  | Joiners [16 h] | Joinery | L2-A |
| FO-L2B-50 |  | Floor finishes - L2-B | 5d | 2026-07-31 | 2026-08-06 | FO-L2B-40, FO-L2A-50 |  | 2026-06-24 | 2026-06-30 | -19d |  | Floor layers [40 h] | Flooring | L2-B |
| FO-L2B-60 |  | Doors and ironmongery - L2-B | 4d | 2026-08-07 | 2026-08-12 | FO-L2B-50 |  | 2026-07-01 | 2026-07-06 | 12d |  | Joiners [32 h] | Joinery | L2-B |
|  | 6.3 | **Level 3** |  | 2026-04-08 | 2026-08-13 |  |  |  |  |  |  |  |  |  |
| FO-L3A-10 |  | MEP first fix - L3-A | 3d | 2026-04-08 | 2026-04-13 | E5020, FO-L2B-10 |  | 2026-03-19 | 2026-03-24 | 39.71d | 0d | MEP fitters [24 h] | MEP | L3-A |
| FO-L3A-20 |  | Partition framing and boarding - L3-A | 4d | 2026-04-13 | 2026-04-17 | FO-L3A-10, FO-L2B-20 |  | 2026-03-24 | 2026-03-30 | 53.71d | 0d | Dryliners [32 h] | Drylining | L3-A |
| FO-L3B-10 |  | MEP first fix - L3-B | 3d | 2026-04-13 | 2026-04-16 | FO-L3A-10 |  | 2026-03-24 | 2026-03-27 | 39.71d | 1d | MEP fitters [24 h] | MEP | L3-B |
| FO-L3A-30 |  | Tape, joint and paint - L3-A | 3d | 2026-04-15 | 2026-04-20 | FO-L3A-20 FS-2d |  | 2026-03-26 | 2026-03-31 | 55.71d |  | Decorators [24 h] | Decorating | L3-A |
| FO-L3B-20 |  | Partition framing and boarding - L3-B | 4d | 2026-04-17 | 2026-04-23 | FO-L3B-10, FO-L3A-20 |  | 2026-03-30 | 2026-04-07 | 53.71d | 0d | Dryliners [32 h] | Drylining | L3-B |
| FO-L3B-30 |  | Tape, joint and paint - L3-B | 3d | 2026-04-21 | 2026-04-24 | FO-L3B-20 SS+2d, FO-L3B-20 FF+1d |  | 2026-04-01 | 2026-04-08 | 53.71d |  | Decorators [24 h] | Decorating | L3-B |
| FO-L3A-40 |  | Ceilings - L3-A | 2d | 2026-07-31 | 2026-08-03 | FO-L3A-30, M1020, FO-L2B-40 |  | 2026-06-24 | 2026-06-25 | -16d |  | Ceiling fixers [16 h] | Ceilings | L3-A |
| FO-L3B-40 |  | Ceilings - L3-B | 2d | 2026-08-04 | 2026-08-05 | FO-L3B-30, M1020, FO-L3A-40 |  | 2026-06-26 | 2026-06-29 | -16d |  | Ceiling fixers [16 h] | Ceilings | L3-B |
| FO-L3A-50 |  | Floor finishes - L3-A | 2d | 2026-08-07 | 2026-08-10 | FO-L3A-40, FO-L2B-50 |  | 2026-07-01 | 2026-07-02 | -19d |  | Floor layers [16 h] | Flooring | L3-A |
| FO-L3A-60 |  | Doors and ironmongery - L3-A | 1d | 2026-08-11 | 2026-08-11 | FO-L3A-50 |  | 2026-07-03 | 2026-07-03 | 3d | 2d | Joiners [8 h] | Joinery | L3-A |
| FO-L3B-50 |  | Floor finishes - L3-B | 2d | 2026-08-11 | 2026-08-12 | FO-L3B-40, FO-L3A-50 |  | 2026-07-03 | 2026-07-06 | -19d |  | Floor layers [16 h] | Flooring | L3-B |
| FO-L3B-60 |  | Doors and ironmongery - L3-B | 1d | 2026-08-13 | 2026-08-13 | FO-L3B-50 |  | 2026-07-07 | 2026-07-07 | -19d |  | Joiners [8 h] | Joinery | L3-B |

| ID | WBS | Activity | Duration | Start | Finish | Predecessors | Complete | Remaining | Planned start | Planned finish | Total float | Constraint | Resources | Trade | Zone |
| --- | --- | --- | --- | --- | --- | --- | --- | --- | --- | --- | --- | --- | --- | --- | --- |
|  | 7 | **MEP & commissioning** |  | 2026-01-12 | 2026-09-29 |  |  |  |  |  |  |  |  |  |  |
| K7000 |  | MEP risers and primary distribution | 60d | 2026-01-12 A | 2026-05-14 | P2060, F4020 | 15% | 51d | 2026-01-08 | 2026-04-01 | 20d |  | MEP fitters [480 h] | MEP | Risers |
| K7010 |  | Lift installation | 25d | 2026-03-02 | 2026-04-08 | P2070 FF, E5020 FF |  |  | 2026-02-12 | 2026-03-19 | 45.71d |  | Lift engineers [200 h] | Lift | Core |
| K7050 |  | Temporary power off | 1d | 2026-07-17 | 2026-07-17 | K7040 SF |  |  | 2026-06-10 | 2026-06-10 | -25d |  | MEP fitters [8 h] | MEP | Building |
| K7040 |  | Permanent power on | 1d | 2026-07-20 | 2026-07-20 | P2090 |  |  | 2026-06-11 | 2026-06-11 | -26d |  | MEP fitters [8 h] | MEP | Building |
| K7020 |  | Commissioning and testing | 50d | 2026-07-21 | 2026-09-29 | K7000, K7010, K7040, P2080, FO-L3B-10, K7050 |  |  | 2026-06-12 | 2026-08-20 | -26d |  | Commissioning engineers [400 h] | Commissioning | Building |
| K7030 |  | Fire alarm and life safety tests | 10d | 2026-08-18 | 2026-09-01 | K7020 SS+20d |  |  | 2026-07-10 | 2026-07-23 | -6d |  | Commissioning engineers [80 h] | Commissioning | Building |
|  | 8 | **External works & handover** |  | 2026-05-28 | 2026-10-06 |  |  |  |  |  |  |  |  |  |  |
| H8000 |  | External works and paving | 25d | 2026-05-28 | 2026-07-01 | E5060 |  |  | 2026-04-21 | 2026-05-27 | 37d |  |  | Groundworks | Site |
| H8010 |  | Landscaping | 15d | 2026-06-01 | 2026-06-19 |  |  |  |  |  | 50d | start on or after 2026-06-01 |  | Landscaping | Site |
| H8020 |  | Install signage | 5d | 2026-07-22 | 2026-07-28 | FO-L1A-60 |  |  | 2026-06-15 | 2026-06-19 | 23d |  |  | Signage | Building |
| H8030 |  | Final clean | 10d | 2026-08-14 | 2026-08-27 | FO-L3B-60 |  |  | 2026-07-08 | 2026-07-21 | -19d |  |  | GC | Building |
| H8040 |  | Snagging and defects | 15d | 2026-08-28 | 2026-09-18 | H8030 |  |  | 2026-07-22 | 2026-08-11 | -19d |  |  | GC | Building |
| H8050 |  | Issue handover documents | 0d | 2026-09-30 | 2026-09-29 | M1040 |  |  | 2026-08-21 | 2026-08-20 | -21d |  |  | GC |  |
| H8060 |  | Demobilise site | 5d | 2026-09-30 | 2026-10-06 | M1040, L9000 |  |  | 2026-08-21 | 2026-08-27 | -26d |  |  | GC | Site |

## Activity codes

| Code | Value | Meaning |
| --- | --- | --- |
| Trade | Ceilings | Ceilings trade |
| Trade | Commissioning | Commissioning trade |
| Trade | Concrete | Concrete trade |
| Trade | Decorating | Decorating trade |
| Trade | Drylining | Drylining trade |
| Trade | Facade | Facade trade |
| Trade | Flooring | Flooring trade |
| Trade | GC | GC trade |
| Trade | Groundworks | Groundworks trade |
| Trade | Joinery | Joinery trade |
| Trade | Landscaping | Landscaping trade |
| Trade | Lift | Lift trade |
| Trade | MEP | MEP trade |
| Trade | Masonry | Masonry trade |
| Trade | Roofing | Roofing trade |
| Trade | Scaffolding | Scaffolding trade |
| Trade | Signage | Signage trade |
| Trade | Steel | Steel trade |
| Trade | Utilities | Utilities trade |
| Zone | Building | Zone Building |
| Zone | Core | Zone Core |
| Zone | Envelope | Zone Envelope |
| Zone | Ground | Zone Ground |
| Zone | L1 | Zone L1 |
| Zone | L1-A | Zone L1-A |
| Zone | L1-B | Zone L1-B |
| Zone | L2 | Zone L2 |
| Zone | L2-A | Zone L2-A |
| Zone | L2-B | Zone L2-B |
| Zone | L3 | Zone L3 |
| Zone | L3-A | Zone L3-A |
| Zone | L3-B | Zone L3-B |
| Zone | Risers | Zone Risers |
| Zone | Roof | Zone Roof |
| Zone | Site | Zone Site |
